# 项目1.0.1

Schedule from MS Project, 2015-03-19 to 2015-07-01.
....

## Calendars

- 标准: Mon-Fri 08:00-12:00, 13:00-17:00; Sat-Sun off.

## Resources

| Resource |
| --- |
| 1.0.1 |
| 王斐 |
| 张晋卿 |
| 张振 |
| 李涵 |

## Schedule

| ID | WBS | Task | Type | Duration | Start | Finish | Predecessors | Constraint | Resources | Work |
| --- | --- | --- | --- | --- | --- | --- | --- | --- | --- | --- |
| 1 | 1 | **项目确定及介绍** |  | 32h | 2015-03-19 08:00 | 2015-03-24 17:00 |  |  |  | 88h |
| 2 | 1.1 | 开会讨论 | manual | 1h | 2015-03-19 08:00 | 2015-03-19 09:00 |  |  | 李涵; 王斐; 张晋卿; 张振 | 4h |
| 3 | 1.2 | 调研linux文件系统 | manual | 16h | 2015-03-19 09:00 | 2015-03-23 09:00 | 2 |  | 李涵 | 16h |
| 4 | 1.3 | 调研高性能计算开源软件 | manual | 16h | 2015-03-19 09:00 | 2015-03-23 09:00 | 2 |  | 张振 | 16h |
| 5 | 1.4 | 调研数据处理开源软件 | manual | 16h | 2015-03-19 09:00 | 2015-03-23 09:00 | 2 |  | 张晋卿 | 16h |
| 6 | 1.5 | 调研CompCert编译器 | manual | 16h | 2015-03-19 09:00 | 2015-03-23 09:00 | 2 |  | 王斐 | 16h |
| 7 | 1.6 | 开会确定项目 | manual | 1h | 2015-03-23 09:00 | 2015-03-23 10:00 | 3, 4, 5, 6 |  | 李涵; 王斐; 张晋卿; 张振 | 4h |
| 8 | 1.7 | 材料准备 | manual | 3h | 2015-03-23 10:00 | 2015-03-23 14:00 | 7 |  | 李涵; 王斐; 张晋卿; 张振 | 12h |
| 9 | 1.8 | 制作PPT，准备课题介绍 | manual | 2h | 2015-03-24 08:00 | 2015-03-24 10:00 | 8 |  | 王斐; 张晋卿 | 4h |
| 10 | 2 | **CompCert C编译器开发计划书编写** |  | 24h | 2015-03-25 08:00 | 2015-03-27 17:00 | 1 |  |  | 64h |
| 11 | 2.1 | 上课 | manual | 3h | 2015-03-25 08:00 | 2015-03-25 11:00 |  |  | 李涵; 王斐; 张晋卿; 张振 | 12h |
| 12 | 2.2 | 开会总结问题并且讨论计划书编写 | manual | 2h | 2015-03-25 11:00 | 2015-03-25 14:00 | 11 |  | 李涵; 王斐; 张晋卿; 张振 | 8h |
| 13 | 2.3 | 编写Project | manual | 2h | 2015-03-25 14:00 | 2015-03-25 16:00 | 12 |  | 王斐; 张晋卿 | 4h |
| 14 | 2.4 | 阅读用户手册 | manual | 8h | 2015-03-25 16:00 | 2015-03-26 16:00 | 13 |  | 张晋卿 | 8h |
| 15 | 2.5 | 安装CompCert C编译器软件 | manual | 8h | 2015-03-25 16:00 | 2015-03-26 16:00 | 13 |  | 李涵; 张振 | 16h |
| 16 | 2.6 | 阅读并整理CompCert C源代码 | manual | 8h | 2015-03-25 16:00 | 2015-03-26 16:00 | 13 |  | 王斐 | 8h |
| 17 | 2.7 | 编写CompCert C开发计划书 | manual | 2h | 2015-03-26 16:00 | 2015-03-27 09:00 | 14, 15, 16 |  | 李涵; 王斐; 张晋卿; 张振 | 8h |
| 18 | 3 | **软件需求分析** |  | 56h | 2015-03-29 08:00 | 2015-04-05 17:00 | 10, 1 |  |  | 95h |
| 19 | 3.1 | 更新任务计划书 | manual | 2h | 2015-03-30 08:00 | 2015-03-30 10:00 |  | start no earlier than 2015-03-30 08:00 | 王斐; 张晋卿 | 3h |
| 20 | 3.2 | 开会讨论需求 | manual | 2h | 2015-03-30 10:00 | 2015-03-30 12:00 | 19 |  | 王斐; 张晋卿; 李涵; 张振 | 8h |
| 21 | 3.3 | 制作RUCM | manual | 8h | 2015-03-31 08:00 | 2015-03-31 17:00 | 20 |  | 王斐; 张振 | 16h |
| 22 | 3.4 | 编写软件需求规格说明书 | manual | 8h | 2015-03-31 08:00 | 2015-03-31 17:00 | 20 |  | 李涵; 张晋卿 | 16h |
| 23 | 3.5 | 上课 | manual | 3h | 2015-04-01 08:00 | 2015-04-01 11:00 |  |  | 王斐; 李涵; 张晋卿; 张振 | 12h |
| 24 | 3.6 | 开会分析出现的问题 | manual | 2h | 2015-04-02 08:00 | 2015-04-02 10:00 | 23 |  | 李涵; 王斐; 张晋卿; 张振 | 8h |
| 25 | 3.7 | 更改RUCM | manual | 8h | 2015-04-03 08:00 | 2015-04-03 17:00 | 24 |  | 李涵; 王斐; 张晋卿; 张振 | 32h |
| 26 | 3.8 | 制作检查单 | milestone, manual | 0h | 2015-04-05 17:00 | 2015-04-05 17:00 |  |  | 张晋卿; 张振 |  |

| ID | WBS | Task | Type | Duration | Start | Finish | Predecessors | Resources | Work |
| --- | --- | --- | --- | --- | --- | --- | --- | --- | --- |
| 27 | 4 | **软件需求评审** |  | 16h | 2015-04-06 08:00 | 2015-04-07 17:00 | 18 |  | 12h |
| 28 | 4.1 | 对各组进行评审 | manual | 2h | 2015-04-06 08:00 | 2015-04-06 10:00 |  | 李涵; 王斐; 张晋卿; 张振 | 8h |
| 29 | 4.2 | 收集本小组出现的问题 | manual | 2h | 2015-04-07 08:00 | 2015-04-07 10:00 |  | 张晋卿; 张振 | 4h |
| 30 | 5 | **软件需求复评审** |  | 5d | 2015-04-08 08:00 | 2015-04-14 17:00 | 27 |  | 94h |
| 31 | 5.1 | 上课 | manual | 3h | 2015-04-08 08:00 | 2015-04-08 11:00 |  | 李涵; 王斐; 张振; 张晋卿 | 12h |
| 32 | 5.2 | 整理课堂问题 | manual | 2h | 2015-04-09 08:00 | 2015-04-09 10:00 | 31 | 张晋卿 | 2h |
| 33 | 5.3 | 修改RUCM | manual | 3h | 2015-04-10 08:00 | 2015-04-10 11:00 | 32 | 李涵; 王斐 | 6h |
| 34 | 5.4 | 修改软件需求规格说明书 | manual | 3h | 2015-04-10 08:00 | 2015-04-10 11:00 | 32 | 张晋卿; 张振 | 6h |
| 35 | 5.5 | 进行软件项目的评审 | manual | 13h | 2015-04-10 11:00 | 2015-04-13 17:00 | 33, 34 | 李涵; 王斐; 张晋卿; 张振 | 52h |
| 36 | 5.6 | 进行项目总结 | manual | 4h | 2015-04-14 08:00 | 2015-04-14 12:00 | 35 | 李涵; 王斐; 张晋卿; 张振 | 16h |
| 37 | 6 | 上课进行项目需求的介绍 | manual | 3h | 2015-04-15 08:00 | 2015-04-15 11:00 |  | 李涵; 王斐; 张晋卿; 张振 | 12h |
| 38 | 7 | **软件测试** |  | 4d | 2015-04-23 08:00 | 2015-04-28 17:00 |  |  | 40h |
| 39 | 7.1 | 开会讨论测试任务 | manual | 2h | 2015-04-15 11:00 | 2015-04-15 14:00 | 37 | 李涵; 王斐; 张晋卿; 张振 | 8h |
| 40 | 7.2 | 设计测试用例 | manual | 8h | 2015-04-15 14:00 | 2015-04-16 14:00 | 39 | 王斐; 张振 | 16h |
| 41 | 7.3 | 编写测试文档 | manual | 8h | 2015-04-16 14:00 | 2015-04-17 14:00 | 40 | 李涵; 张晋卿 | 16h |
| 42 | 8 | **软件测试评审** |  | 5d | 2015-04-29 08:00 | 2015-05-05 17:00 | 38 |  | 60h |
| 43 | 8.1 | 上课 | manual | 3h | 2015-04-29 08:00 | 2015-04-29 11:00 |  | 李涵; 王斐; 张晋卿; 张振 | 12h |
| 44 | 8.2 | 进行软件测试评审 | manual | 8h | 2015-04-30 08:00 | 2015-04-30 17:00 |  | 李涵; 王斐; 张晋卿; 张振 | 32h |
| 45 | 8.3 | 制作评审报告 | manual | 1d | 2015-05-05 08:00 | 2015-05-05 17:00 |  | 张晋卿; 王斐 | 16h |
| 46 | 9 | **软件测试复评审** |  | 5d | 2015-05-06 08:00 | 2015-05-12 17:00 | 42 |  | 32h |
| 47 | 9.1 | 上课 | manual | 1d | 2015-05-06 08:00 | 2015-05-06 17:00 |  | 李涵; 张晋卿; 王斐; 张振 | 32h |
| 48 | 10 | **软件产品更新与展示** |  | 5d | 2015-05-13 08:00 | 2015-05-19 17:00 | 1, 10, 18, 27 |  | 32h |
| 49 | 10.1 | 上课 | manual | 1d | 2015-05-13 08:00 | 2015-05-13 17:00 |  | 李涵; 王斐; 张晋卿; 张振 | 32h |
| 50 | 11 | 演示 | manual | 5d | 2015-05-20 08:00 | 2015-05-26 17:00 | 46 |  |  |
| 51 | 12 | 综合实验分析 | manual | 5d | 2015-05-27 08:00 | 2015-06-02 17:00 | 50 |  |  |
| 52 | 13 | 综合实验总结 | manual | 5d | 2015-06-03 08:00 | 2015-06-09 17:00 | 51 |  |  |
| 53 | 14 | 软件进度计划与控制 | manual | 75d | 2015-03-19 08:00 | 2015-07-01 17:00 |  |  |  |
| 54 | 15 | 工作量估计与统计分析 | manual | 75d | 2015-03-19 08:00 | 2015-07-01 17:00 |  |  |  |
| 55 | 16 | 配置管理 | manual | 75d | 2015-03-19 08:00 | 2015-07-01 17:00 |  |  |  |
